# سیستم برگزاری جلسات آنلاین

Schedule from MS Project, 2020-12-02 to 2021-08-21, costs in IRR, A marks actual dates.

## Calendars

- Standard: Mon-Fri 08:00-12:00, 13:00-17:00; Sat-Sun off. Exceptions (off unless hours are given): 2021-01-01 to 2040-02-18 08:00-16:00 (Saturday, recurring), 2021-01-01 to 2040-02-19 08:00-16:00 (Sunday, recurring), 2021-01-02 to 2040-02-24 (Friday, recurring), 2021-01-08 to 2040-02-27 08:00-16:00 (Monday, recurring), 2021-01-08 to 2040-02-28 08:00-16:00 (Tuesday, recurring), 2021-01-08 to 2040-02-29 08:00-16:00 (Wednesday, recurring), 2021-01-08 to 2040-03-01 08:00-16:00 (Thursday, recurring).

## Resources

| Resource | Group | Rate |
| --- | --- | --- |
| مدیر پروژه | 1 | 500000 |
| مدیر تیم فنی | 1 | 500000 |
| مدیر ارتباطات | 1 | 500000 |
| 1 frontend توسعه دهنده دسکتاپ | 2 | 200000 |
| 2 frontend توسعه دهنده دسکتاپ | 2 | 200000 |
| 3 frontend توسعه دهنده دسکتاپ | 2 | 200000 |
| 4 frontend توسعه دهنده دسکتاپ | 2 | 200000 |
| 1 backend توسعه دهنده | 2 | 200000 |
| 2 backend توسعه دهنده | 2 | 200000 |
| 3 backend توسعه دهنده | 2 | 200000 |
| 4 backend توسعه دهنده | 2 | 200000 |
| UI طراح | 3 | 150000 |
| مسئول ارتباطات 1 | 4 | 200000 |
| مسئول ارتباطات 2 | 4 | 200000 |
| 1 frontend توسعه دهنده موبایل | 2 | 200000 |
| 2 frontend توسعه دهنده موبایل | 2 | 200000 |
| 3 frontend توسعه دهنده موبایل | 2 | 200000 |
| 4 frontend توسعه دهنده موبایل | 2 | 200000 |

## Schedule

| ID | WBS | Task | Type | Duration | Start | Finish | Predecessors | Complete | Total slack | Resources | Work | Actual work | Cost | Actual cost |
| --- | --- | --- | --- | --- | --- | --- | --- | --- | --- | --- | --- | --- | --- | --- |
| 1 | 1 | **ایده ی کلی و برنامه ریزی** |  | 4d | 2020-12-02 A | 2020-12-07 A |  | 100% |  | مدیر ارتباطات; مدیر پروژه | 64h | 64h | 32,000,000 | 32,000,000 |
| 2 | 1.1 | تعریف اولیه ی محدوده ی پروژه |  | 1d | 2020-12-02 A | 2020-12-02 A |  | 100% |  |  |  |  |  |  |
| 3 | 1.2 | تعیین ارزش تجاری پروژه |  | 1d | 2020-12-03 A | 2020-12-03 A | 2 | 100% |  |  |  |  |  |  |
| 4 | 1.3 | تعریف نیازهای تجاری که پروژه آن ها را رفع می کند |  | 1d | 2020-12-03 A | 2020-12-03 A | 2 | 100% |  |  |  |  |  |  |
| 5 | 1.4 | برآورد ریسک ها و تعریف رویکرد مدیریت ریسک |  | 1d | 2020-12-04 A | 2020-12-04 A | 4 | 100% |  |  |  |  |  |  |
| 6 | 1.5 | امکان سنجی پروژه |  | 1d | 2020-12-04 A | 2020-12-04 A | 4 | 100% |  |  |  |  |  |  |
| 7 | 1.6 | تعیین برنامه کاری به صورت کلی |  | 1d | 2020-12-05 A | 2020-12-07 A | 6 | 100% |  |  |  |  |  |  |
| 8 | 1.7 | اتمام برنامه ریزی | milestone | 0d | 2020-12-07 A | 2020-12-07 A | 7 | 100% |  |  |  |  |  |  |
| 9 | 2 | **تحلیل** |  | 19d | 2020-12-08 | 2021-01-01 | 1 |  | 0d |  | 350.84h |  | 127,420,000 |  |
| 10 | 2.1 | انتخاب استراتژی تحلیل |  | 1d | 2020-12-08 | 2020-12-08 |  |  | 0d | مدیر پروژه; مدیر تیم فنی | 16h |  | 8,000,000 |  |
| 11 | 2.2 | **جمع آوری نیازمندی های سیستم** |  | 3d | 2020-12-09 | 2020-12-11 | 10 |  | 0d |  | 47h |  | 23,500,000 |  |
| 12 | 2.2.1 | ارزیابی سیستم های مشابه موجود |  | 1d | 2020-12-09 | 2020-12-09 |  |  | 0d | مدیر ارتباطات; مدیر پروژه | 15h |  | 7,500,000 |  |
| 13 | 2.2.2 | مقایسه ی سیستم های موجود |  | 2d | 2020-12-10 | 2020-12-11 | 12 |  | 0d | مدیر ارتباطات [50%]; مدیر پروژه [50%] | 16h |  | 8,000,000 |  |
| 14 | 2.2.3 | تعریف اولیه نیازمندی های سیستم |  | 2d | 2020-12-10 | 2020-12-11 | 12 |  | 0d | مدیر ارتباطات [50%]; مدیر پروژه [50%] | 16h |  | 8,000,000 |  |
| 15 | 2.3 | تشکیل تیم ارتباطات |  | 2d | 2020-12-14 | 2020-12-15 | 11 |  | 0d | مدیر ارتباطات | 16h |  | 8,000,000 |  |
| 16 | 2.4 | **برگزاری جلسات با مشتری ها** |  | 4d | 2020-12-16 | 2020-12-21 | 15 |  | 0d |  | 64h |  | 12,800,000 |  |
| 17 | 2.4.1 | ارائه ی محدوده ی اصلی پروژه برای مشتری |  | 1d | 2020-12-16 | 2020-12-16 |  |  | 0d | مسئول ارتباطات 1; مسئول ارتباطات 2 | 16h |  | 3,200,000 |  |
| 18 | 2.4.2 | دریافت پیشنهادات و نیازمندی های خاص مشتری |  | 3d | 2020-12-17 | 2020-12-21 | 17 |  | 0d | مسئول ارتباطات 1; مسئول ارتباطات 2 | 48h |  | 9,600,000 |  |
| 19 | 2.5 | **جمع بندی و بررسی نیازمندی ها** |  | 2d | 2020-12-22 | 2020-12-23 | 16 |  | 0d |  | 48h |  | 14,400,000 |  |
| 20 | 2.5.1 | **نیازمندی های سیستم** |  | 2d | 2020-12-22 | 2020-12-23 |  |  | 0d |  | 32h |  | 11,200,000 |  |
| 21 | 2.5.1.1 | بدست آوردن طرح ذهنی از نیازمندی های سیستم |  | 2d | 2020-12-22 | 2020-12-23 |  |  | 0d | مسئول ارتباطات 1 [50%]; مدیر تیم فنی [50%] | 16h |  | 5,600,000 |  |
| 22 | 2.5.1.2 | تایید نهایی نیازمندی های سیستم |  | 2d | 2020-12-22 | 2020-12-23 |  |  | 0d | مسئول ارتباطات 1 [50%]; مدیر تیم فنی [50%] | 16h |  | 5,600,000 |  |
| 23 | 2.5.2 | **نیازمندی های کاربر** |  | 2d | 2020-12-22 | 2020-12-23 |  |  | 0d |  | 16h |  | 3,200,000 |  |
| 24 | 2.5.2.1 | بدست آوردن طرح ذهنی از نیازمندی های کاربر |  | 2d | 2020-12-22 | 2020-12-23 |  |  | 0d | مسئول ارتباطات 2 [50%] | 8h |  | 1,600,000 |  |
| 25 | 2.5.2.2 | تایید نهایی نیازمندی های کاربر |  | 2d | 2020-12-22 | 2020-12-23 |  |  | 0d | مسئول ارتباطات 2 [50%] | 8h |  | 1,600,000 |  |
| 26 | 2.6 | تایید نهایی نیازمندی ها |  | 1d | 2020-12-24 | 2020-12-24 | 19 |  | 0d | مدیر ارتباطات; مدیر پروژه | 16h |  | 8,000,000 |  |
| 27 | 2.7 | User Story تهیه |  | 1d | 2020-12-25 | 2020-12-25 | 26 |  | 0d | مدیر پروژه; مدیر تیم فنی | 16h |  | 8,000,000 |  |

| ID | WBS | Task | Type | Duration | Start | Finish | Predecessors | Complete | Remaining | Total slack | Free slack | Resources | Work | Actual work | Cost | Actual cost |
| --- | --- | --- | --- | --- | --- | --- | --- | --- | --- | --- | --- | --- | --- | --- | --- | --- |
| 28 | 2.8 | **مدیریت زمان** |  | 1d | 2020-12-28 | 2020-12-28 | 27 |  |  | 5.12d | 0d | مدیر ارتباطات; مدیر پروژه [50%] | 12h |  | 6,000,000 |  |
| 29 | 2.8.1 | شناسایی عوامل تاثیر گذار بر زمان انجام پروژه |  | 1d | 2020-12-28 | 2020-12-28 |  |  |  | 5.12d |  |  |  |  |  |  |
| 30 | 2.8.2 | تعیین زمان شروع انجام پروژه |  | 1d | 2020-12-28 | 2020-12-28 |  |  |  | 5.12d |  |  |  |  |  |  |
| 31 | 2.8.3 | تعیین زمان کلی انجام پروژه |  | 1d | 2020-12-28 | 2020-12-28 |  |  |  | 5.12d |  |  |  |  |  |  |
| 32 | 2.9 | **مدیریت ریسک** |  | 1d | 2020-12-28 | 2020-12-28 | 27 |  |  | 8.12d |  | مدیر پروژه [50%] | 4h |  | 2,000,000 |  |
| 33 | 2.9.1 | شناسایی ریسک ها |  | 1d | 2020-12-28 | 2020-12-28 |  |  |  | 8.12d |  |  |  |  |  |  |
| 34 | 2.9.2 | اولویت بندی ریسک ها |  | 1d | 2020-12-28 | 2020-12-28 |  |  |  | 8.12d |  |  |  |  |  |  |
| 35 | 2.9.3 | تعیین رویکرد مواجهه با هر ریسک |  | 1d | 2020-12-28 | 2020-12-28 |  |  |  | 8.12d |  |  |  |  |  |  |
| 36 | 2.10 | **مدیریت منابع** |  | 2d | 2020-12-29 | 2020-12-30 | 28 |  |  | 5.12d | 0d |  | 23.92h |  | 11,960,000 |  |
| 37 | 2.10.1 | **منابع مالی** |  | 1d | 2020-12-29 | 2020-12-29 |  |  |  | 6.12d |  | مدیر ارتباطات; مدیر پروژه [33%] | 10.64h |  | 5,320,000 |  |
| 38 | 2.10.1.1 | برآورد هزینه ها |  | 1d | 2020-12-29 | 2020-12-29 |  |  |  | 6.12d |  |  |  |  |  |  |
| 39 | 2.10.1.2 | تخصیص بودجه به هر بخش |  | 1d | 2020-12-29 | 2020-12-29 |  |  |  | 6.12d |  |  |  |  |  |  |
| 40 | 2.10.2 | **منابع انسانی** |  | 2d | 2020-12-29 | 2020-12-30 |  |  |  | 5.12d |  | مدیر پروژه [33%]; مدیر تیم فنی [50%] | 13.28h |  | 6,640,000 |  |
| 41 | 2.10.2.1 | تشکیل تیم فنی |  | 2d | 2020-12-29 | 2020-12-30 |  |  |  | 5.12d |  |  |  |  |  |  |
| 42 | 2.10.2.2 | تعیین نقش اعضای تیم فنی |  | 1d | 2020-12-29 | 2020-12-29 |  |  |  | 6.12d |  |  |  |  |  |  |
| 43 | 2.11 | Functional Modeling تهیه |  | 1d | 2020-12-31 | 2020-12-31 | 36 |  |  | 5.12d |  | 3 backend توسعه دهنده | 8h |  | 1,600,000 |  |
| 44 | 2.12 | Structural Modeling تهیه |  | 1d | 2020-12-28 | 2020-12-28 | 27 |  |  | 8.12d |  | 3 frontend توسعه دهنده دسکتاپ | 8h |  | 1,600,000 |  |
| 45 | 2.13 | **Behavioral Modeling تهیه** |  | 2d | 2020-12-28 | 2020-12-29 | 27 |  |  | 0d |  |  | 48h |  | 9,600,000 |  |
| 46 | 2.13.1 | Sequence Diagram تهیه |  | 1d | 2020-12-28 | 2020-12-28 |  |  |  | 1d |  | 4 backend توسعه دهنده | 8h |  | 1,600,000 |  |
| 47 | 2.13.2 | Activity Diagram تهیه |  | 1d | 2020-12-28 | 2020-12-28 |  |  |  | 1d |  | 4 frontend توسعه دهنده دسکتاپ | 8h |  | 1,600,000 |  |
| 48 | 2.13.3 | Use-Case تهیه |  | 2d | 2020-12-28 | 2020-12-29 |  |  |  | 0d |  | 2 backend توسعه دهنده; 2 frontend توسعه دهنده دسکتاپ | 32h |  | 6,400,000 |  |
| 49 | 2.14 | تعریف دقیق و تصحیح محدوده ی پروژه |  | 3d | 2020-12-30 | 2021-01-01 | 45 |  |  | 0d |  | مدیر ارتباطات; مدیر پروژه [33%]; مدیر تیم فنی [50%] | 23.92h |  | 11,960,000 |  |
| 50 | 2.15 | اتمام تحلیل | milestone | 0d | 2021-01-01 | 2021-01-01 | 49 |  |  | 0d |  |  |  |  |  |  |
| 51 | 3 | **طراحی** |  | 22d | 2021-01-06 A | 2021-02-01 | 9 | 27% | 16.13d | 0d |  |  | 263.76h | 136h | 85,164,000 | 48,800,000 |
| 52 | 3.1 | انتخاب استراتژی طراحی |  | 1d | 2021-01-06 A | 2021-01-07 A |  | 100% |  |  |  | مدیر تیم فنی; مدیر پروژه | 16h | 16h | 8,000,000 | 8,000,000 |
| 53 | 3.2 | طراحی معماری سیستم |  | 2d | 2021-01-07 A | 2021-01-10 A | 52 | 100% |  |  |  | مدیر تیم فنی; مدیر پروژه | 32h | 32h | 16,000,000 | 16,000,000 |

| ID | WBS | Task | Type | Duration | Start | Finish | Predecessors | Complete | Remaining | Total slack | Free slack | Resources | Work | Actual work | Cost | Actual cost |
| --- | --- | --- | --- | --- | --- | --- | --- | --- | --- | --- | --- | --- | --- | --- | --- | --- |
| 54 | 3.3 | **طراحی پایگاه داده** |  | 3d | 2021-01-10 A | 2021-01-13 A | 53 | 100% |  |  |  |  | 56h | 56h | 18,400,000 | 18,400,000 |
| 55 | 3.3.1 | تعریف نیازمندی های پایگاه داده |  | 1d | 2021-01-10 A | 2021-01-11 A |  | 100% |  |  |  | 1 backend توسعه دهنده | 8h | 8h | 1,600,000 | 1,600,000 |
| 56 | 3.3.2 | انتخاب نوع پایگاه داده |  | 1d | 2021-01-10 A | 2021-01-11 A |  | 100% |  |  |  | 2 backend توسعه دهنده | 8h | 8h | 1,600,000 | 1,600,000 |
| 57 | 3.3.3 | طراحی کلاس های دسترسی و تغییر در داده ها |  | 2d | 2021-01-10 A | 2021-01-12 A |  | 100% |  |  |  | 3 backend توسعه دهنده; مدیر تیم فنی | 32h | 32h | 11,200,000 | 11,200,000 |
| 58 | 3.3.4 | تایید و بررسی نهایی طراحی پایگاه داده |  | 1d | 2021-01-12 A | 2021-01-13 A | 57 | 100% |  |  |  | مدیر تیم فنی | 8h | 8h | 4,000,000 | 4,000,000 |
| 59 | 3.4 | backend جلسه تیم های طراحی و پیاده سازی |  | 1d | 2021-01-13 A | 2021-01-14 A | 54 | 100% |  |  |  | 1 backend توسعه دهنده; 2 backend توسعه دهنده; 3 backend توسعه دهنده; 4 backend توسعه دهنده | 32h | 32h | 6,400,000 | 6,400,000 |
| 60 | 3.5 | **طراحی واسط کاربری** |  | 12d | 2021-01-13 A | 2021-01-27 | 54 | 11% | 10.63d | 0d |  |  |  |  |  |  |
| 61 | 3.5.1 | **برنامه ی موبایل** |  | 12d | 2021-01-13 A | 2021-01-27 |  | 11% | 10.63d | 0d |  | UI طراح [50%] |  |  |  |  |
| 62 | 3.5.1.1 | طراحی صفحه ورود |  | 1d | 2021-01-13 A | 2021-01-14 A |  | 100% |  |  |  |  |  |  |  |  |
| 63 | 3.5.1.2 | طراحی لیست مخاطبین |  | 1d | 2021-01-14 A | 2021-01-16 | 62 | 37% | 0.63d | 0d |  |  |  |  |  |  |
| 64 | 3.5.1.3 | طراحی صفحه ی تماس تصویری و صوتی |  | 1d | 2021-01-16 | 2021-01-17 | 63 |  |  | 0d |  |  |  |  |  |  |
| 65 | 3.5.1.4 | طراحی گفتگوی متنی به شکل خصوصی و عمومی |  | 1d | 2021-01-17 | 2021-01-18 | 64 |  |  | 0d |  |  |  |  |  |  |
| 66 | 3.5.1.5 | طراحی پنل تعریف جلسه، افراد و موضوع جلسه |  | 1d | 2021-01-18 | 2021-01-19 | 65 |  |  | 0d |  |  |  |  |  |  |
| 67 | 3.5.1.6 | طراحی پنل ویژگی های جلسه |  | 1d | 2021-01-19 | 2021-01-20 | 66 |  |  | 0d |  |  |  |  |  |  |
| 68 | 3.5.1.7 | طراحی صفحه ثبت مستندات جلسه و گزارش گیری |  | 1d | 2021-01-20 | 2021-01-21 | 67 |  |  | 0d |  |  |  |  |  |  |
| 69 | 3.5.1.8 | طراحی سایر اجزای احتمالی سیستم |  | 5d | 2021-01-21 | 2021-01-27 | 68 |  |  | 0d |  |  |  |  |  |  |
| 70 | 3.5.2 | **برنامه ی دسکتاپ** |  | 12d | 2021-01-13 A | 2021-01-27 |  | 11% | 10.63d | 0d |  | UI طراح [50%] |  |  |  |  |
| 71 | 3.5.2.1 | طراحی صفحه ورود |  | 1d | 2021-01-13 A | 2021-01-14 A |  | 100% |  |  |  |  |  |  |  |  |
| 72 | 3.5.2.2 | طراحی لیست مخاطبین |  | 1d | 2021-01-14 A | 2021-01-16 | 62 | 37% | 0.63d | 10d |  |  |  |  |  |  |
| 73 | 3.5.2.3 | طراحی صفحه ی تماس تصویری و صوتی |  | 1d | 2021-01-16 | 2021-01-17 | 63 |  |  | 9d |  |  |  |  |  |  |
| 74 | 3.5.2.4 | طراحی گفتگوی متنی به شکل خصوصی و عمومی |  | 1d | 2021-01-17 | 2021-01-18 | 64 |  |  | 8d |  |  |  |  |  |  |
| 75 | 3.5.2.5 | طراحی پنل تعریف جلسه، افراد و موضوع جلسه |  | 1d | 2021-01-18 | 2021-01-19 | 65 |  |  | 7d |  |  |  |  |  |  |
| 76 | 3.5.2.6 | طراحی پنل ویژگی های جلسه |  | 1d | 2021-01-19 | 2021-01-20 | 66 |  |  | 6d |  |  |  |  |  |  |
| 77 | 3.5.2.7 | طراحی صفحه ثبت مستندات جلسه و گزارش گیری |  | 1d | 2021-01-20 | 2021-01-21 | 67 |  |  | 5d |  |  |  |  |  |  |
| 78 | 3.5.2.8 | طراحی سایر اجزای احتمالی سیستم |  | 5d | 2021-01-21 | 2021-01-27 | 68 |  |  | 0d |  |  |  |  |  |  |
| 79 | 3.6 | frontend جلسه تیم های طراحی و پیاده سازی |  | 3d | 2021-01-27 | 2021-01-31 | 60 |  |  | 1d |  | 1 frontend توسعه دهنده دسکتاپ; 2 frontend توسعه دهنده دسکتاپ; 3 frontend توسعه دهنده دسکتاپ; 4 frontend توسعه دهنده دسکتاپ; UI طراح [33%]; 1 frontend توسعه دهنده موبایل; 2 frontend توسعه دهنده موبایل; 3 frontend توسعه دهنده موبایل; 4 frontend توسعه دهنده موبایل | 71.92h |  | 13,988,000 |  |
| 80 | 3.7 | مستند کردن طراحی |  | 3d | 2021-01-27 | 2021-01-31 | 60 |  |  | 1d |  | UI طراح [33%] | 7.92h |  | 1,188,000 |  |
| 81 | 3.8 | تایید مستند طراحی توسط مدیر فنی |  | 1d | 2021-01-27 | 2021-01-28 | 60 |  |  | 0d |  | مدیر تیم فنی; مدیر پروژه | 16h |  | 8,000,000 |  |
| 82 | 3.9 | بررسی برنامه ریزی و امکان سنجی مجدد پروژه |  | 3d | 2021-01-28 | 2021-02-01 | 81 |  |  | 0d |  | UI طراح [33%] | 7.92h |  | 1,188,000 |  |
| 83 | 3.10 | به روز رسانی برنامه ریزی پروژه (در صورت نیاز) |  | 1d | 2021-01-28 | 2021-01-30 | 81 |  |  | 2d | 0d | مدیر ارتباطات; مدیر پروژه; مدیر تیم فنی | 24h |  | 12,000,000 |  |
| 84 | 3.11 | اتمام طراحی بخش های مختلف سیستم | milestone | 0d | 2021-01-30 | 2021-01-30 | 83 |  |  | 2d |  |  |  |  |  |  |

| ID | WBS | Task | Type | Duration | Start | Finish | Predecessors | Total slack | Free slack | Resources | Work | Cost |
| --- | --- | --- | --- | --- | --- | --- | --- | --- | --- | --- | --- | --- |
| 85 | 4 | **پیاده سازی** |  | 137d | 2021-02-01 | 2021-07-11 | 51 | 0d |  |  | 6064h | 1,232,000,000 |
| 86 | 4.1 | **backend پیاده سازی** |  | 55d | 2021-02-01 | 2021-04-06 | 54 | 0d |  |  | 1448h | 292,000,000 |
| 87 | 4.1.1 | backend انتخاب زبان برنامه نویسی و تکنولوژی های مورد استفاده در |  | 1d | 2021-02-01 | 2021-02-02 |  | 54d |  | مدیر تیم فنی | 8h | 4,000,000 |
| 88 | 4.1.2 | راه اندازی سرور |  | 5d | 2021-02-01 | 2021-02-07 |  | 0d |  | 3 backend توسعه دهنده; 4 backend توسعه دهنده | 80h | 16,000,000 |
| 89 | 4.1.3 | پیاده سازی پایگاه داده |  | 15d | 2021-02-07 | 2021-02-24 | 88 | 0d |  | 2 backend توسعه دهنده; 1 backend توسعه دهنده | 240h | 48,000,000 |
| 90 | 4.1.4 | API پیاده سازی |  | 30d | 2021-02-24 | 2021-03-31 | 89 | 0d |  | 1 backend توسعه دهنده; 2 backend توسعه دهنده; 3 backend توسعه دهنده; 4 backend توسعه دهنده | 960h | 192,000,000 |
| 91 | 4.1.5 | **backend تست** |  | 5d | 2021-03-31 | 2021-04-06 | 90 | 0d |  |  | 160h | 32,000,000 |
| 92 | 4.1.5.1 | تست پایگاه داده |  | 5d | 2021-03-31 | 2021-04-06 |  | 0d |  | 3 backend توسعه دهنده; 4 backend توسعه دهنده | 80h | 16,000,000 |
| 93 | 4.1.5.2 | API تست |  | 5d | 2021-03-31 | 2021-04-06 |  | 0d |  | 1 backend توسعه دهنده; 2 backend توسعه دهنده | 80h | 16,000,000 |
| 94 | 4.2 | frontend و backend جلسه تیم های |  | 1d | 2021-04-06 | 2021-04-07 | 86 | 0d |  | 3 backend توسعه دهنده; 3 frontend توسعه دهنده دسکتاپ; 4 backend توسعه دهنده; 4 frontend توسعه دهنده دسکتاپ; 1 frontend توسعه دهنده موبایل; 2 frontend توسعه دهنده موبایل | 48h | 9,600,000 |
| 95 | 4.3 | **frontend پیاده سازی** |  | 61d | 2021-04-07 | 2021-06-17 | 94 | 0d |  |  | 3536h | 709,600,000 |
| 96 | 4.3.1 | frontend انتخاب زبان برنامه نویسی و تکنولوژی های مورد استفاده در |  | 1d | 2021-04-07 | 2021-04-08 |  | 60d |  | مدیر تیم فنی | 8h | 4,000,000 |
| 97 | 4.3.2 | جلسه ی تیم های پیاده سازی موبایل و دسکتاپ |  | 1d | 2021-04-07 | 2021-04-08 |  | 0d |  | 1 frontend توسعه دهنده دسکتاپ; 2 frontend توسعه دهنده دسکتاپ; 3 frontend توسعه دهنده دسکتاپ; 4 frontend توسعه دهنده دسکتاپ; 1 frontend توسعه دهنده موبایل; 2 frontend توسعه دهنده موبایل; 3 frontend توسعه دهنده موبایل; 4 frontend توسعه دهنده موبایل | 64h | 12,800,000 |
| 98 | 4.3.3 | **برنامه ی موبایل** |  | 60d | 2021-04-08 | 2021-06-17 | 97 | 0d |  |  | 1776h | 355,200,000 |
| 99 | 4.3.3.1 | پیاده سازی صفحه ورود |  | 2d | 2021-04-08 | 2021-04-11 |  | 0d |  | 1 frontend توسعه دهنده موبایل; 2 frontend توسعه دهنده موبایل | 32h | 6,400,000 |
| 100 | 4.3.3.2 | پیاده سازی لیست مخاطبین |  | 3d | 2021-04-08 | 2021-04-12 |  | 39d | 0d | 3 frontend توسعه دهنده موبایل; 4 frontend توسعه دهنده موبایل | 48h | 9,600,000 |
| 101 | 4.3.3.3 | پیاده سازی صفحه ی تماس تصویری و صوتی |  | 15d | 2021-04-11 | 2021-04-28 | 99 | 0d |  | 1 frontend توسعه دهنده موبایل; 2 frontend توسعه دهنده موبایل | 240h | 48,000,000 |
| 102 | 4.3.3.4 | پیاده سازی صفحه گفتگوی متنی به شکل خصوصی و عمومی |  | 15d | 2021-04-12 | 2021-04-29 | 100 | 39d | 0d | 3 frontend توسعه دهنده موبایل; 4 frontend توسعه دهنده موبایل | 240h | 48,000,000 |
| 103 | 4.3.3.5 | پیاده سازی پنل تعریف جلسه، افراد و موضوع جلسه |  | 3d | 2021-04-28 | 2021-05-02 | 101 | 0d |  | 1 frontend توسعه دهنده موبایل; 2 frontend توسعه دهنده موبایل | 48h | 9,600,000 |
| 104 | 4.3.3.6 | پیاده سازی پنل ویژگی های جلسه |  | 3d | 2021-04-29 | 2021-05-03 | 102 | 39d |  | 3 frontend توسعه دهنده موبایل; 4 frontend توسعه دهنده موبایل | 48h | 9,600,000 |
| 105 | 4.3.3.7 | پیاده سازی صفحه ثبت مستندات جلسه و گزارش گیری |  | 3d | 2021-05-02 | 2021-05-05 | 103 | 0d |  | 1 frontend توسعه دهنده موبایل; 2 frontend توسعه دهنده موبایل | 48h | 9,600,000 |
| 106 | 4.3.3.8 | پیاده سازی سایر اجزای احتمالی سیستم |  | 30d | 2021-05-05 | 2021-06-09 | 105 | 0d |  | 1 frontend توسعه دهنده موبایل; 2 frontend توسعه دهنده موبایل; 3 frontend توسعه دهنده موبایل; 4 frontend توسعه دهنده موبایل | 960h | 192,000,000 |
| 107 | 4.3.3.9 | تست |  | 7d | 2021-06-09 | 2021-06-17 | 106 | 0d |  | 1 frontend توسعه دهنده موبایل; 2 frontend توسعه دهنده موبایل | 112h | 22,400,000 |
| 108 | 4.3.4 | **برنامه ی دسکتاپ** |  | 60d | 2021-04-08 | 2021-06-17 | 97 | 0d |  |  | 1688h | 337,600,000 |
| 109 | 4.3.4.1 | پیاده سازی صفحه ورود |  | 2d | 2021-04-08 | 2021-04-11 |  | 0d |  | 1 frontend توسعه دهنده دسکتاپ | 16h | 3,200,000 |
| 110 | 4.3.4.2 | پیاده سازی لیست مخاطبین |  | 3d | 2021-04-08 | 2021-04-12 |  | 39d | 0d | 3 frontend توسعه دهنده دسکتاپ; 4 frontend توسعه دهنده دسکتاپ | 48h | 9,600,000 |
| 111 | 4.3.4.3 | پیاده سازی صفحه ی تماس تصویری و صوتی |  | 15d | 2021-04-11 | 2021-04-28 | 109 | 0d |  | 1 frontend توسعه دهنده دسکتاپ; 2 frontend توسعه دهنده دسکتاپ | 240h | 48,000,000 |
| 112 | 4.3.4.4 | پیاده سازی صفحه گفتگوی متنی به شکل خصوصی و عمومی |  | 15d | 2021-04-12 | 2021-04-29 | 110 | 39d | 0d | 3 frontend توسعه دهنده دسکتاپ; 4 frontend توسعه دهنده دسکتاپ | 240h | 48,000,000 |
| 113 | 4.3.4.5 | پیاده سازی پنل تعریف جلسه، افراد و موضوع جلسه |  | 3d | 2021-04-28 | 2021-05-02 | 111 | 0d |  | 1 frontend توسعه دهنده دسکتاپ | 24h | 4,800,000 |
| 114 | 4.3.4.6 | پیاده سازی پنل ویژگی های جلسه |  | 3d | 2021-04-29 | 2021-05-03 | 112 | 39d |  | 3 frontend توسعه دهنده دسکتاپ | 24h | 4,800,000 |
| 115 | 4.3.4.7 | پیاده سازی صفحه ثبت مستندات جلسه و گزارش گیری |  | 3d | 2021-05-02 | 2021-05-05 | 113 | 0d |  | 2 frontend توسعه دهنده دسکتاپ | 24h | 4,800,000 |
| 116 | 4.3.4.8 | پیاده سازی سایر اجزای احتمالی سیستم |  | 30d | 2021-05-05 | 2021-06-09 | 115 | 0d |  | 1 frontend توسعه دهنده دسکتاپ; 2 frontend توسعه دهنده دسکتاپ; 3 frontend توسعه دهنده دسکتاپ; 4 frontend توسعه دهنده دسکتاپ | 960h | 192,000,000 |
| 117 | 4.3.4.9 | تست |  | 7d | 2021-06-09 | 2021-06-17 | 116 | 0d |  | 3 frontend توسعه دهنده دسکتاپ; 4 frontend توسعه دهنده دسکتاپ | 112h | 22,400,000 |
| 118 | 4.4 | اتصال و همگام سازی اجزای پیاده سازی شده |  | 20d | 2021-06-17 | 2021-07-11 | 95 | 0d |  | 1 backend توسعه دهنده; 1 frontend توسعه دهنده دسکتاپ; 1 frontend توسعه دهنده موبایل; 2 backend توسعه دهنده; 2 frontend توسعه دهنده دسکتاپ; 2 frontend توسعه دهنده موبایل | 960h | 192,000,000 |
| 119 | 4.5 | مستندات پیاده سازی |  | 1d | 2021-06-17 | 2021-06-19 | 95 | 17d | 0d | 3 backend توسعه دهنده; 3 frontend توسعه دهنده موبایل; 3 frontend توسعه دهنده دسکتاپ; مدیر پروژه; مدیر تیم فنی | 40h | 12,800,000 |
| 120 | 4.6 | به روز رسانی برنامه ریزی پروژه (در صورت نیاز) |  | 2d | 2021-06-19 | 2021-06-21 | 119 | 17d | 0d | مدیر پروژه; مدیر تیم فنی | 32h | 16,000,000 |
| 121 | 4.7 | اتمام پیاده سازی | milestone | 0d | 2021-06-21 | 2021-06-21 | 120 | 17d |  |  |  |  |

| ID | WBS | Task | Type | Duration | Start | Finish | Predecessors | Total slack | Free slack | Resources | Work | Cost |
| --- | --- | --- | --- | --- | --- | --- | --- | --- | --- | --- | --- | --- |
| 122 | 5 | **تست سیستم** |  | 10d | 2021-07-11 | 2021-07-22 | 85 | 0d |  |  | 336h | 88,800,000 |
| 123 | 5.1 | برنامه ریزی تست |  | 3d | 2021-07-11 | 2021-07-14 |  | 0d |  | مدیر ارتباطات; مدیر پروژه | 48h | 24,000,000 |
| 124 | 5.2 | تست واحد های مختلف |  | 7d | 2021-07-14 | 2021-07-22 | 123 | 0d |  | 2 backend توسعه دهنده; 2 frontend توسعه دهنده موبایل; 2 frontend توسعه دهنده دسکتاپ | 168h | 33,600,000 |
| 125 | 5.3 | تست توسط کاربر |  | 3d | 2021-07-14 | 2021-07-18 | 123 | 1d | 0d | مسئول ارتباطات 1; مسئول ارتباطات 2 | 48h | 9,600,000 |
| 126 | 5.4 | گزارش نتایج تست |  | 3d | 2021-07-18 | 2021-07-21 | 125 | 1d | 0d | مسئول ارتباطات 1; مسئول ارتباطات 2; مدیر پروژه | 72h | 21,600,000 |
| 127 | 5.5 | اتمام تست | milestone | 0d | 2021-07-21 | 2021-07-21 | 126 | 1d |  |  |  |  |
| 128 | 6 | **تحویل سیستم** |  | 24d | 2021-07-22 | 2021-08-19 | 122 | 0d |  |  | 848h | 229,600,000 |
| 129 | 6.1 | **تحویل اولیه** |  | 22d | 2021-07-22 | 2021-08-17 |  | 0d |  |  | 832h | 224,000,000 |
| 130 | 6.1.1 | **استقرار سیستم** |  | 5d | 2021-07-22 | 2021-07-28 |  | 0d |  |  | 80h | 16,000,000 |
| 131 | 6.1.1.1 | انتقال داده های واقعی به پایگاه داده |  | 3d | 2021-07-22 | 2021-07-26 |  | 0d |  | 3 backend توسعه دهنده; 4 backend توسعه دهنده | 48h | 9,600,000 |
| 132 | 6.1.1.2 | تست مجدد پایگاه داده |  | 2d | 2021-07-26 | 2021-07-28 | 131 | 0d |  | 1 backend توسعه دهنده; 2 backend توسعه دهنده | 32h | 6,400,000 |
| 133 | 6.1.2 | آموزش به کاربران |  | 2d | 2021-07-28 | 2021-07-31 | 130 | 0d |  | مسئول ارتباطات 1; مسئول ارتباطات 2 | 32h | 6,400,000 |
| 134 | 6.1.3 | **مدیریت خطاهای احتمالی سیستم** |  | 15d | 2021-07-31 | 2021-08-17 | 133 | 0d |  |  | 720h | 201,600,000 |
| 135 | 6.1.3.1 | بررسی و جمع آوری خطا ها |  | 3d | 2021-07-31 | 2021-08-03 |  | 0d |  | مسئول ارتباطات 1; مسئول ارتباطات 2 | 48h | 9,600,000 |
| 136 | 6.1.3.2 | برنامه ریزی برای رفع خطا ها |  | 2d | 2021-08-03 | 2021-08-05 | 135 | 0d |  | مدیر ارتباطات; مدیر پروژه | 32h | 16,000,000 |
| 137 | 6.1.3.3 | به روز رسانی سیستم در صورت نیاز |  | 10d | 2021-08-05 | 2021-08-17 | 136 | 0d |  | مدیر تیم فنی; 3 backend توسعه دهنده; 3 frontend توسعه دهنده دسکتاپ; 3 frontend توسعه دهنده موبایل; 4 backend توسعه دهنده; 4 frontend توسعه دهنده دسکتاپ; 4 frontend توسعه دهنده موبایل; مدیر پروژه | 640h | 176,000,000 |
| 138 | 6.2 | تحویل نهایی |  | 1d | 2021-08-17 | 2021-08-18 | 129 | 0d |  |  |  |  |
| 139 | 6.3 | مستند سازی |  | 1d | 2021-08-18 | 2021-08-19 | 138 | 0d |  | مسئول ارتباطات 1; مدیر پروژه | 16h | 5,600,000 |
| 140 | 6.4 | اتمام تحویل سیستم | milestone | 0d | 2021-08-19 | 2021-08-19 | 139 | 0d |  |  |  |  |
| 141 | 7 | **مرور پس از پروژه** |  | 1d | 2021-08-19 | 2021-08-21 | 128 | 0d |  | مدیر ارتباطات; مدیر پروژه; مدیر تیم فنی | 24h | 12,000,000 |
| 142 | 7.1 | **شناسایی تجربیات جدید** |  | 1d | 2021-08-19 | 2021-08-21 |  | 0d |  |  |  |  |
| 143 | 7.1.1 | موفقیت های پروژه |  | 1d | 2021-08-19 | 2021-08-21 |  | 0d |  |  |  |  |
| 144 | 7.1.2 | چالش های حین پروژه |  | 1d | 2021-08-19 | 2021-08-21 |  | 0d |  |  |  |  |
| 145 | 7.1.3 | کاستی های حین پروژه |  | 1d | 2021-08-19 | 2021-08-21 |  | 0d |  |  |  |  |

| ID | WBS | Task | Type | Duration | Start | Finish | Total slack |
| --- | --- | --- | --- | --- | --- | --- | --- |
| 146 | 7.2 | **گزارش نهایی پروژه** |  | 1d | 2021-08-19 | 2021-08-21 | 0d |
| 147 | 7.2.1 | هزینه ی پروژه |  | 1d | 2021-08-19 | 2021-08-21 | 0d |
| 148 | 7.2.2 | زمان بندی پروژه |  | 1d | 2021-08-19 | 2021-08-21 | 0d |
| 149 | 7.2.3 | محدوده ی پروژه |  | 1d | 2021-08-19 | 2021-08-21 | 0d |
| 150 | 7.2.4 | بایگانی مستندات و دست آورد ها |  | 1d | 2021-08-19 | 2021-08-21 | 0d |
| 151 | 7.3 | اتمام پروژه | milestone | 0d | 2021-08-19 | 2021-08-19 | 1d |
